Schedule from MS Project, 2018-09-19 to 2019-01-09.

## Calendars

- 标准: Mon-Fri 08:00-12:00, 13:00-17:00; Sat-Sun off. Exceptions (off unless hours are given): 2018-10-27 08:00-12:00, 13:00-17:00.

## Resources

| Resource |
| --- |
| 赵豪杰 |
| 苏碧青 |
| 罗培城 |
| 张嘉诚 |
| 郑丞钧 |

## Schedule

| ID | WBS | Task | Type | Duration | Start | Finish | Predecessors | Resources | Work | 输入 | 输出 |
| --- | --- | --- | --- | --- | --- | --- | --- | --- | --- | --- | --- |
| 1 | 1 | **软件工程系列渔乐生活APP需求工程计划** |  | 82d | 2018-09-19 08:00 | 2019-01-09 17:00 |  |  | 1059.84h |  |  |
| 2 | 1.1 | **项目准备** |  | 4d | 2018-09-19 08:00 | 2018-09-24 17:00 |  |  | 132.8h |  |  |
| 3 | 1.1.1 | 项目任务书下达 | manual | 0.1d | 2018-09-19 08:00 | 2018-09-19 08:48 |  | 赵豪杰 | 0.8h | 项目提出 | 项目确认 |
| 4 | 1.1.2 | logo设计 | manual | 1d | 2018-09-19 08:48 | 2018-09-20 08:48 | 3 | 苏碧青 | 8h | 素材 | 渔乐生活logo |
| 5 | 1.1.3 | 小组会议 | manual | 0.1d | 2018-09-20 08:48 | 2018-09-20 09:36 | 4 | 赵豪杰; 张嘉诚; 罗培城; 苏碧青; 郑丞钧 | 4h | 学习笔记 | 会议记录 |
| 6 | 1.1.4 | 软件资源配置 | manual | 1d | 2018-09-20 09:36 | 2018-09-21 09:36 | 5 | 罗培城 | 8h | 安装 | 软件资源 |
| 7 | 1.1.5 | UML学习 | manual | 1.8d | 2018-09-21 09:36 | 2018-09-22 17:00 | 6 | 罗培城; 苏碧青; 张嘉诚; 赵豪杰; 郑丞钧 | 72h |  |  |
| 8 | 1.1.6 | 与杨枨老师确认项目大致内容 | manual | 1d | 2018-09-24 08:00 | 2018-09-24 17:00 | 7 | 罗培城; 苏碧青; 张嘉诚; 赵豪杰; 郑丞钧 | 40h | 谈话记录 | 录音资料 |
| 9 | 1.2 | **项目启动** |  | 3d | 2018-09-24 08:00 | 2018-09-26 17:00 | 8 |  | 19.2h |  |  |
| 10 | 1.2.1 | **可行性分析** |  | 2d | 2018-09-25 08:00 | 2018-09-26 17:00 | 8 |  | 19.2h |  |  |
| 11 | 1.2.1.1 | 小组会议 | manual | 0.1d | 2018-09-25 08:00 | 2018-09-25 08:48 | 8 | 罗培城; 苏碧青; 张嘉诚; 赵豪杰; 郑丞钧 | 4h | 学习笔记 | 会议记录 |
| 12 | 1.2.1.2 | 可行性分析文档完成 | milestone, manual | 1.9d | 2018-09-25 08:48 | 2018-09-26 17:00 | 11 | 罗培城 | 15.2h | 初步可行性分析文档，可行性文档中的图表 | 可行性分析文档 |
| 13 | 1.3 | **项目计划** |  | 37d | 2018-09-26 08:00 | 2018-11-14 17:00 | 12 |  | 697.84h |  |  |
| 14 | 1.3.1 | **需求工程阶段-初步** |  | 4d | 2018-09-26 08:00 | 2018-09-29 17:00 | 12 |  | 33.6h |  |  |
| 15 | 1.3.1.1 | 小组会议 | manual | 0.1d | 2018-09-26 08:00 | 2018-09-26 08:48 | 12 | 罗培城; 苏碧青; 张嘉诚; 赵豪杰; 郑丞钧 | 4h | 学习笔记 | 会议记录 |
| 16 | 1.3.1.2 | 需求工程起草 | manual | 0.3d | 2018-09-26 08:48 | 2018-09-26 11:12 | 15 | 张嘉诚 | 2.4h | 会议记录 | 需求工程起草文档 |
| 17 | 1.3.1.3 | 甘特图 | manual | 1d | 2018-09-27 08:00 | 2018-09-27 17:00 | 16 | 郑丞钧 | 8h | 会议记录 | 甘特图 |
| 18 | 1.3.1.4 | OBS | manual | 0.5d | 2018-09-28 08:00 | 2018-09-28 12:00 | 17 | 苏碧青 | 4h | 甘特图 | OBS |
| 19 | 1.3.1.5 | WBS | manual | 0.5d | 2018-09-28 13:00 | 2018-09-28 17:00 | 18 | 苏碧青 | 4h | 甘特图 | WBS |
| 20 | 1.3.1.6 | 项目章程 | manual | 0.2d | 2018-09-29 08:00 | 2018-09-29 09:36 | 19 | 赵豪杰 | 1.6h |  |  |
| 21 | 1.3.1.7 | 项目计划起草 | manual | 0.3d | 2018-09-29 08:00 | 2018-09-29 10:24 | 20 | 罗培城; 苏碧青; 张嘉诚; 郑丞钧 | 9.6h | OBS、WBS | 项目计划原型 |
| 22 | 1.3.2 | **需求工程阶段-修订** |  | 2d | 2018-09-29 08:00 | 2018-09-30 17:00 | 21 |  | 24h |  |  |
| 23 | 1.3.2.1 | 需求工程起草文档修订 | milestone, manual | 0.5d | 2018-09-30 08:00 | 2018-09-30 12:00 | 21 | 张嘉诚 | 4h | 需求工程起草文档 | 需求工程文档 |
| 24 | 1.3.2.2 | 项目计划修订 | milestone, manual | 0.5d | 2018-09-30 08:00 | 2018-09-30 12:00 | 23 | 苏碧青; 张嘉诚; 赵豪杰; 郑丞钧; 罗培城 | 20h | 项目计划原型 | 项目计划 |

| ID | WBS | Task | Type | Duration | Start | Finish | Predecessors | Constraint | Resources | Work | 输入 | 输出 |
| --- | --- | --- | --- | --- | --- | --- | --- | --- | --- | --- | --- | --- |
| 25 | 1.3.3 | **需求获取** |  | 9d | 2018-10-08 08:00 | 2018-10-18 17:00 | 24 |  |  | 125.84h |  |  |
| 26 | 1.3.3.1 | 定义愿景和范围 | manual | 0.1d | 2018-10-08 08:00 | 2018-10-08 08:48 | 24 |  | 赵豪杰 | 0.8h | 项目计划 | 定义结果 |
| 27 | 1.3.3.2 | 确定需求开发过程 | manual | 0.1d | 2018-10-09 08:00 | 2018-10-09 08:48 | 26 |  | 赵豪杰 | 0.8h | 定义结果 | 开发过程 |
| 28 | 1.3.3.3 | 用户群分类 | manual | 0.5d | 2018-10-10 08:00 | 2018-10-10 12:00 | 27 |  | 张嘉诚 | 4h | 软件使用目标 | 分类结果 |
| 29 | 1.3.3.4 | 小组会议 | manual | 0.2d | 2018-10-10 08:00 | 2018-10-10 09:36 | 28 |  | 罗培城; 苏碧青; 张嘉诚; 赵豪杰; 郑丞钧 | 8h | 学习笔记 | 会议记录 |
| 30 | 1.3.3.5 | 选择产品代表 | manual | 0.13d | 2018-10-11 08:00 | 2018-10-11 09:02 | 29 |  | 苏碧青 | 1.04h | 会议记录 | 选择结果 |
| 31 | 1.3.3.6 | 建立核心队伍 | manual | 0.2d | 2018-10-11 08:00 | 2018-10-11 09:36 | 30 |  | 赵豪杰 | 1.6h | 会议记录 | 核心队伍 |
| 32 | 1.3.3.7 | 与杨枨老师进行需求访谈 | manual | 0.2d | 2018-10-12 08:00 | 2018-10-12 09:36 | 31 |  | 罗培城; 苏碧青; 张嘉诚; 赵豪杰; 郑丞钧 | 8h | 会议记录 | 访谈记录 |
| 33 | 1.3.3.8 | 确定使用实例 | manual | 0.2d | 2018-10-12 09:36 | 2018-10-12 11:12 | 32 |  | 郑丞钧 | 1.6h | 会议记录 | 使用实例 |
| 34 | 1.3.3.9 | 小组会议 | manual | 0.1d | 2018-10-12 11:12 | 2018-10-12 12:00 | 33 |  | 罗培城; 苏碧青; 张嘉诚; 赵豪杰; 郑丞钧 | 4h | 学习笔记 | 会议记录 |
| 35 | 1.3.3.10 | 分析用户工作流程 | manual | 1d | 2018-10-13 08:00 | 2018-10-13 17:00 | 34 |  | 张嘉诚 | 8h | 用户工作流程 | 分析结果 |
| 36 | 1.3.3.11 | 确定质量属性 | manual | 0.3d | 2018-10-14 08:00 | 2018-10-14 10:24 | 35 |  | 张嘉诚 | 2.4h | 确定质量属性 | 确定结果 |
| 37 | 1.3.3.12 | 检查问题报告 | manual | 0.5d | 2018-10-15 08:00 | 2018-10-15 12:00 | 36 |  | 罗培城; 郑丞钧 | 8h | 检查问题报告 | 检查结果 |
| 38 | 1.3.3.13 | 需求重用 | manual | 0.2d | 2018-10-16 08:00 | 2018-10-16 09:36 | 37 |  | 张嘉诚 | 1.6h | 用户需求 | 确认结果 |
| 39 | 1.3.3.14 | 小组会议 | manual | 0.5d | 2018-10-16 08:00 | 2018-10-16 12:00 | 38 |  | 罗培城; 苏碧青; 张嘉诚; 赵豪杰; 郑丞钧 | 20h | 学习笔记 | 会议记录 |
| 40 | 1.3.3.15 | 与杨枨老师进行需求确认 | manual | 0.2d | 2018-10-17 08:00 | 2018-10-17 09:36 | 39 |  | 罗培城; 苏碧青; 张嘉诚; 赵豪杰; 郑丞钧 | 8h | 会议记录 | 与杨枨老师确认结果 |
| 41 | 1.3.3.16 | 小组会议 | manual | 0.2d | 2018-10-17 09:36 | 2018-10-17 11:12 | 40 |  | 罗培城; 苏碧青; 张嘉诚; 赵豪杰; 郑丞钧 | 8h | 与杨枨老师确认结果 | 会议记录 |
| 42 | 1.3.3.17 | 需求整理 | milestone, manual | 1d | 2018-10-17 11:12 | 2018-10-18 11:12 | 41 |  | 罗培城; 苏碧青; 张嘉诚; 赵豪杰; 郑丞钧 | 40h |  |  |
| 43 | 1.3.4 | **需求分析** |  | 8d | 2018-10-18 11:12 | 2018-10-29 11:12 | 42 |  |  | 176h |  |  |
| 44 | 1.3.4.1 | 绘制关联图 | manual | 1d | 2018-10-18 11:12 | 2018-10-19 11:12 | 42 |  | 苏碧青 | 8h | 需求内容 | 关联图 |
| 45 | 1.3.4.2 | 创建开发原型 | manual | 1d | 2018-10-19 11:12 | 2018-10-20 11:12 | 44 |  | 郑丞钧 | 8h | 关联图 | 需求原型 |
| 46 | 1.3.4.3 | 分析可行性 | manual | 1d | 2018-10-22 08:00 | 2018-10-22 17:00 | 45 |  | 罗培城 | 8h | 需求原型 | 可行性分析文档 |
| 47 | 1.3.4.4 | 确定需求优先级 | manual | 0.1d | 2018-10-23 08:00 | 2018-10-23 08:48 | 46 |  | 张嘉诚 | 0.8h | 可行性分析文档 | 需求优先级结果 |
| 48 | 1.3.4.5 | 为需求建立模型 | manual | 1d | 2018-10-23 08:48 | 2018-10-24 08:48 | 47 |  | 赵豪杰 | 8h | 需求优先级结果 | 需求模型 |
| 49 | 1.3.4.6 | 小组会议 | manual | 0.9d | 2018-10-24 08:48 | 2018-10-24 17:00 | 48 |  | 赵豪杰 | 7.2h | 需求模型 | 会议记录 |
| 50 | 1.3.4.7 | 与杨枨老师进行需求访谈 | manual | 1d | 2018-10-25 08:00 | 2018-10-25 17:00 | 49 |  | 罗培城; 苏碧青; 张嘉诚; 赵豪杰; 郑丞钧 | 40h | 会议记录 | 访谈记录 |
| 51 | 1.3.4.8 | UML学习 | manual | 1d | 2018-10-26 08:00 | 2018-10-26 17:00 | 50 |  | 罗培城; 苏碧青; 张嘉诚; 赵豪杰; 郑丞钧 | 40h |  |  |
| 52 | 1.3.4.9 | 编写数据字典 | manual | 1d | 2018-10-27 08:00 | 2018-10-27 17:00 | 51 | start no earlier than 2018-10-27 08:00 | 张嘉诚 | 8h | 系统内容 | 数据字典 |
| 53 | 1.3.4.10 | 小组会议 | manual | 0.2d | 2018-10-28 08:00 | 2018-10-28 09:36 | 52 |  | 罗培城; 苏碧青; 张嘉诚; 赵豪杰; 郑丞钧 | 8h | 数据字典 | 会议记录 |
| 54 | 1.3.4.11 | UML复习 | manual | 1d | 2018-10-29 08:00 | 2018-10-29 17:00 | 53 |  | 罗培城; 苏碧青; 张嘉诚; 赵豪杰; 郑丞钧 | 40h |  |  |

| ID | WBS | Task | Type | Duration | Start | Finish | Predecessors | Resources | Work | 输入 | 输出 |
| --- | --- | --- | --- | --- | --- | --- | --- | --- | --- | --- | --- |
| 55 | 1.3.5 | **需求规格说明** |  | 12d | 2018-10-30 08:00 | 2018-11-14 17:00 | 54 |  | 258.4h |  |  |
| 56 | 1.3.5.1 | 小组会议 | manual | 0.2d | 2018-10-30 08:00 | 2018-10-30 09:36 | 54 | 罗培城; 苏碧青; 张嘉诚; 赵豪杰; 郑丞钧 | 8h | 需求分析文档 | 会议记录 |
| 57 | 1.3.5.2 | 与杨枨老师进行访谈 | manual | 0.3d | 2018-10-30 09:36 | 2018-10-30 12:00 | 56 | 罗培城; 苏碧青; 张嘉诚; 赵豪杰; 郑丞钧 | 12h | 会议记录 | 访谈记录 |
| 58 | 1.3.5.3 | 采用软件需求规格说明模板 | manual | 1d | 2018-10-30 13:00 | 2018-10-31 12:00 | 57 | 赵豪杰 | 8h | 访谈记录 | 模板采用结果 |
| 59 | 1.3.5.4 | 小组会议 | manual | 0.5d | 2018-10-31 13:00 | 2018-10-31 17:00 | 58 | 罗培城; 苏碧青; 张嘉诚; 赵豪杰; 郑丞钧 | 20h | 模板采用结果 | 会议记录 |
| 60 | 1.3.5.5 | 指明需求来源 | manual | 2d | 2018-11-01 08:00 | 2018-11-02 17:00 | 59 | 郑丞钧 | 16h | 需求记录 | 明确来源 |
| 61 | 1.3.5.6 | 钓鱼用户访谈 | manual | 1.5d | 2018-11-03 08:00 | 2018-11-04 12:00 | 60 | 罗培城; 苏碧青; 张嘉诚; 赵豪杰; 郑丞钧 | 60h | 明确来源 | 访谈记录 |
| 62 | 1.3.5.7 | 小组会议 | manual | 0.2d | 2018-11-05 08:00 | 2018-11-05 09:36 | 61 | 罗培城; 苏碧青; 张嘉诚; 赵豪杰; 郑丞钧 | 8h | 访谈记录 | 会议记录 |
| 63 | 1.3.5.8 | 为每一项需求注上记号 | manual | 1d | 2018-11-05 09:36 | 2018-11-06 09:36 | 62 | 张嘉诚 | 8h | 会议记录 | 标识需求 |
| 64 | 1.3.5.9 | UML学习 | manual | 1d | 2018-11-06 09:36 | 2018-11-07 09:36 | 63 | 罗培城; 苏碧青; 张嘉诚; 赵豪杰; 郑丞钧 | 40h |  |  |
| 65 | 1.3.5.10 | 记录业务规范 | manual | 0.3d | 2018-11-07 09:36 | 2018-11-07 12:00 | 64 | 苏碧青 | 2.4h | 项目需求 | 业务规范 |
| 66 | 1.3.5.11 | UML复习 | manual | 1d | 2018-11-07 13:00 | 2018-11-08 12:00 | 65 | 罗培城; 苏碧青; 张嘉诚; 赵豪杰; 郑丞钧 | 40h |  |  |
| 67 | 1.3.5.12 | 小组会议 | manual | 0.2d | 2018-11-08 13:00 | 2018-11-08 14:36 | 66 | 罗培城; 苏碧青; 张嘉诚; 赵豪杰; 郑丞钧 | 8h | 业务规范 | 会议记录 |
| 68 | 1.3.5.13 | 整理成需求规格说明书 | milestone, manual | 1d | 2018-11-08 14:36 | 2018-11-09 14:36 | 67 | 赵豪杰 | 8h | 会议记录 | 需求规格说明书 |
| 69 | 1.3.5.14 | 与杨枨老师进行交流 | manual | 0.3d | 2018-11-09 14:36 | 2018-11-09 17:00 | 68 | 罗培城; 苏碧青; 张嘉诚; 赵豪杰; 郑丞钧 | 12h | 需求规格说明书 | 交流记录 |
| 70 | 1.3.5.15 | 小组会议 | manual | 0.2d | 2018-11-12 08:00 | 2018-11-12 09:36 | 69 | 罗培城; 苏碧青; 张嘉诚; 赵豪杰; 郑丞钧 | 8h | 交流记录 | 会议记录 |
| 71 | 1.3.6 | 管理员访谈 | manual | 1d | 2018-11-12 09:36 | 2018-11-13 09:36 | 70 | 罗培城; 苏碧青; 张嘉诚; 赵豪杰; 郑丞钧 | 40h |  |  |
| 72 | 1.3.7 | 召开应用供需开发联系会议 | manual | 1d | 2018-11-13 09:36 | 2018-11-14 09:36 | 71 | 罗培城; 苏碧青; 张嘉诚; 赵豪杰; 郑丞钧 | 40h |  |  |
| 73 | 1.4 | **项目控制** |  | 21d | 2018-11-15 08:00 | 2018-12-13 17:00 | 72 |  | 114h |  |  |
| 74 | 1.4.1 | **需求规格审核** |  | 8d | 2018-11-15 08:00 | 2018-11-26 17:00 | 72 |  | 56.8h |  |  |
| 75 | 1.4.1.1 | 审查需求文档 | manual | 0.3d | 2018-11-15 08:00 | 2018-11-15 10:24 | 72 | 赵豪杰 | 2.4h | 需求规格说明书 | 审查结果 |
| 76 | 1.4.1.2 | 小组会议 | manual | 0.2d | 2018-11-16 08:00 | 2018-11-16 09:36 | 75 | 罗培城; 苏碧青; 张嘉诚; 赵豪杰; 郑丞钧 | 8h | 审查结果 | 会议记录 |
| 77 | 1.4.1.3 | 编写需求文档 | manual | 1d | 2018-11-19 08:00 | 2018-11-19 17:00 | 76 | 罗培城 | 8h | 会议记录 | 需求文档 |
| 78 | 1.4.1.4 | 编写用户手册 | manual | 1d | 2018-11-20 08:00 | 2018-11-20 17:00 | 77 | 苏碧青 | 8h | 需求文档 | 用户手册 |
| 79 | 1.4.1.5 | 确定合格的标准 | manual | 0.3d | 2018-11-21 08:00 | 2018-11-21 10:24 | 78 | 张嘉诚 | 2.4h | 用户手册 | 合格标准 |
| 80 | 1.4.1.6 | 管理员访谈 | manual | 0.2d | 2018-11-22 08:00 | 2018-11-22 09:36 | 79 | 罗培城; 苏碧青; 张嘉诚; 赵豪杰; 郑丞钧 | 8h | 合格标准 | 访谈记录 |
| 81 | 1.4.1.7 | 小组会议 | manual | 0.2d | 2018-11-23 08:00 | 2018-11-23 09:36 | 80 | 罗培城; 苏碧青; 张嘉诚; 赵豪杰; 郑丞钧 | 8h | 访谈记录 | 会议记录 |
| 82 | 1.4.1.8 | 与杨枨老师进行交流 | manual | 0.3d | 2018-11-23 09:36 | 2018-11-23 12:00 | 81 | 罗培城; 苏碧青; 张嘉诚; 赵豪杰; 郑丞钧 | 12h | 会议记录 | 交流记录 |

| ID | WBS | Task | Type | Duration | Start | Finish | Predecessors | Resources | Work | 输入 | 输出 |
| --- | --- | --- | --- | --- | --- | --- | --- | --- | --- | --- | --- |
| 83 | 1.4.2 | **需求管理** |  | 14d | 2018-11-26 08:00 | 2018-12-13 17:00 | 82 |  | 57.2h |  |  |
| 84 | 1.4.2.1 | 小组会议 | manual | 0.2d | 2018-11-26 08:00 | 2018-11-26 09:36 | 82 | 罗培城; 苏碧青; 张嘉诚; 赵豪杰; 郑丞钧 | 8h | 交流记录 | 会议记录 |
| 85 | 1.4.2.2 | 确定变更控制过程 | manual | 0.3d | 2018-11-27 08:00 | 2018-11-27 10:24 | 84 | 赵豪杰 | 2.4h | 会议记录 | 变更控制过程 |
| 86 | 1.4.2.3 | 建立变更控制委员会 | manual | 0.2d | 2018-11-28 08:00 | 2018-11-28 09:36 | 85 | 赵豪杰 | 1.6h | 变更控制过程 | 变更控制委员会 |
| 87 | 1.4.2.4 | 进行变更影响分析 | manual | 0.2d | 2018-11-29 08:00 | 2018-11-29 09:36 | 86 | 罗培城 | 1.6h | 变更控制委员会 | 变更影响分析 |
| 88 | 1.4.2.5 | 跟踪每一项变更 | manual | 0.25d | 2018-11-30 08:00 | 2018-11-30 10:00 | 87 | 郑丞钧 | 2h | 变更影响分析 | 跟踪状态记录 |
| 89 | 1.4.2.6 | 编写需求文档的基准版本和控制版本 | manual | 0.2d | 2018-12-03 08:00 | 2018-12-03 09:36 | 88 | 苏碧青 | 1.6h | 跟踪状态记录 | 需求文档基准版本和控制版本 |
| 90 | 1.4.2.7 | 维护变更历史纪录 | manual | 1d | 2018-12-04 08:00 | 2018-12-04 17:00 | 89 | 张嘉诚 | 8h | 需求文档基准版本和控制版本 | 维护结果 |
| 91 | 1.4.2.8 | 小组会议 | manual | 0.2d | 2018-12-05 08:00 | 2018-12-05 09:36 | 90 | 罗培城; 苏碧青; 张嘉诚; 赵豪杰; 郑丞钧 | 8h | 维护结果 | 会议记录 |
| 92 | 1.4.2.9 | 跟踪需求状态 | manual | 1d | 2018-12-06 08:00 | 2018-12-06 17:00 | 91 | 赵豪杰 | 8h | 会议记录 | 跟踪状态记录 |
| 93 | 1.4.2.10 | 衡量需求稳定性 | manual | 1d | 2018-12-07 08:00 | 2018-12-07 17:00 | 92 | 罗培城 | 8h | 跟踪状态记录 | 需求稳定性记录 |
| 94 | 1.4.2.11 | 使用需求管理工具 | manual | 1d | 2018-12-10 08:00 | 2018-12-10 17:00 | 93 | 郑丞钧 | 8h | 需求稳定性记录 | 存储需求 |
| 95 | 1.5 | **项目收尾** |  | 12d | 2018-12-25 08:00 | 2019-01-09 17:00 | 94 |  | 96h |  |  |
| 96 | 1.5.1 | 文档整理 | milestone, manual | 1d | 2018-12-25 08:00 | 2018-12-25 17:00 | 94 | 罗培城; 苏碧青; 张嘉诚; 赵豪杰; 郑丞钧 | 40h | 需求规格说明书 | 项目文档 |
| 97 | 1.5.2 | 制作PPT | manual | 1d | 2018-12-26 08:00 | 2018-12-26 17:00 | 96 | 张嘉诚 | 8h | 需求稳定性记录 | ppt |
| 98 | 1.5.3 | 小组会议 | manual | 0.2d | 2018-12-27 08:00 | 2018-12-27 09:36 | 97 | 罗培城; 苏碧青; 张嘉诚; 赵豪杰; 郑丞钧 | 8h | ppt | 会议记录 |
| 99 | 1.5.4 | 答辩 | manual | 1d | 2019-01-09 08:00 | 2019-01-09 17:00 | 98 | 罗培城; 苏碧青; 张嘉诚; 赵豪杰; 郑丞钧 | 40h |  |  |
